# Desarrollo Validador de Portales

Schedule from Planner, 2009-11-25 to 2010-09-27.
COVETEL

## Calendars

- Predeterminado: Mon-Fri 08:00-12:00, 13:00-17:00; Sat-Sun off.

## Resources

| Resource | Group | Rate |
| --- | --- | --- |
| Juan Mesa | Desarrollo | 150 |
| Walter Vargas | Seguridad | 150 |
| Julio Cesar Vera | Analistas | 150 |
| Lilibeth Ramírez | Control de Calidad | 150 |
| José Rey | Maquetado | 150 |
| Hector Lozada | Desarrollo | 150 |

## Schedule

| ID | WBS | Task | Type | Duration | Start | Finish | Predecessors | Complete | Constraint | Resources | Work |
| --- | --- | --- | --- | --- | --- | --- | --- | --- | --- | --- | --- |
| 1 | 1 | **CNTI-14-09** |  |  | 2009-11-25 | 2010-09-26 |  |  |  |  | 1230.75h |
| 2 | 1.1 | **Sprint I** |  |  | 2009-11-25 | 2010-02-12 |  |  |  |  | 296.25h |
| 3 | 1.1.1 | **Diseño** |  |  | 2009-11-25 | 2010-02-02 |  |  |  |  | 138.25h |
| 4 | 1.1.1.1 | Análisis Inicial de Requerimientos sobre TDR |  |  | 2009-11-25 | 2009-11-26 |  |  |  | Juan Mesa [35%]; Walter Vargas [35%]; Lilibeth Ramírez [30%] | 16h |
| 5 | 1.1.1.2 | Diseño Inicial del prototipo |  |  | 2009-11-27 | 2009-12-03 | 4 |  |  | Juan Mesa [40%]; Walter Vargas [40%]; Lilibeth Ramírez [20%] | 40h |
| 6 | 1.1.1.3 | Reunión Inicial con el Product Owner |  |  | 2010-01-19 | 2010-01-19 |  | 7% | must start on 2010-01-19 | Walter Vargas | 4h |
| 7 | 1.1.1.4 | Plan Director |  |  | 2010-01-19 | 2010-01-20 | 6 |  |  | Lilibeth Ramírez | 8h |
| 8 | 1.1.1.5 | Especificaciones Suplementarias |  |  | 2010-01-20 | 2010-01-21 | 7 |  |  | Julio Cesar Vera [50%]; Lilibeth Ramírez [50%] | 8h |
| 9 | 1.1.1.6 | Manual del estilo Web. |  |  | 2010-01-21 | 2010-01-22 | 8 |  |  | Walter Vargas | 6.25h |
| 10 | 1.1.1.7 | Especificación de Requerimientos del Sistema Actualizados |  |  | 2010-01-22 | 2010-01-27 | 9 |  |  | Juan Mesa [20%]; Walter Vargas [40%]; Lilibeth Ramírez [40%] | 24h |
| 11 | 1.1.1.8 | Documento de Arquitectura de Software |  |  | 2010-01-27 | 2010-02-01 | 10 |  |  | Julio Cesar Vera [50%]; Lilibeth Ramírez [50%] | 24h |
| 12 | 1.1.1.9 | Revisión y Envio |  |  | 2010-02-01 | 2010-02-02 | 11 |  |  | Juan Mesa [20%]; Walter Vargas [20%]; Julio Cesar Vera [30%]; Lilibeth Ramírez [30%] | 8h |
| 13 | 1.1.2 | **Desarrollo** |  |  | 2010-02-02 | 2010-02-04 | 3 |  |  |  | 46h |
| 14 | 1.1.2.1 | Desarrollo de Estilo Base Inicial (Prototipo) |  |  | 2010-02-02 | 2010-02-04 | 5 |  |  | Juan Mesa | 16h |
| 15 | 1.1.2.2 | Desarrollo de Modulo para Cargar Archivo Inicial (Prototipo) |  | 0.75d | 2010-02-02 | 2010-02-03 |  | 100% |  | Walter Vargas | 6h |
| 16 | 1.1.2.3 | Desarrollo de Modulo de Evaluación de Portales (2 disposiciones) (Prototipo) |  |  | 2010-02-02 | 2010-02-03 |  |  |  | Walter Vargas | 8h |
| 17 | 1.1.2.4 | Desarrollo Modulo de Resultados (Prototipo) |  |  | 2010-02-02 | 2010-02-03 |  |  |  | Juan Mesa | 8h |
| 18 | 1.1.2.5 | Desarrollo de Plantilla de Resultados en Formato Pdf Inicial (Prototipo) |  |  | 2010-02-02 | 2010-02-03 |  | 14% |  | José Rey | 8h |
| 19 | 1.1.3 | **Pruebas** |  |  | 2010-02-04 | 2010-02-11 | 13 |  |  |  | 64h |
| 20 | 1.1.3.1 | Caso Prueba Cargar Portales Prototipo V.1.0 |  |  | 2010-02-04 | 2010-02-11 | 14 |  |  | Juan Mesa [40%]; Walter Vargas [50%]; Lilibeth Ramírez [10%] | 40h |
| 21 | 1.1.3.2 | Caso Prueba Evaluar Portales Prototipo V.1.0 |  |  | 2010-02-04 | 2010-02-05 |  |  |  |  | 8h |
| 22 | 1.1.3.3 | Caso Prueba Seleccionar Portales Prototipo V.1.0 |  |  | 2010-02-04 | 2010-02-05 |  |  |  |  | 8h |
| 23 | 1.1.3.4 | Pruebas de Cobertura del Prototipo V.1.0 |  |  | 2010-02-04 | 2010-02-05 |  |  |  |  | 8h |
| 24 | 1.1.4 | **Documentación** |  |  | 2009-11-25 | 2010-02-12 |  |  |  |  | 48h |
| 25 | 1.1.4.1 | Elaboración de Manual de Instalación de Prototipo V.1.0 |  | 1d | 2010-02-11 | 2010-02-12 | 20 |  |  | Lilibeth Ramírez | 8h |
| 26 | 1.1.4.2 | Elaboración del Documento de Arquitectura del Sistema del Prototipo V.1.0 |  |  | 2009-11-25 | 2009-11-25 |  |  |  | Lilibeth Ramírez | 8h |
| 27 | 1.1.4.3 | Elaboración del Documento de Especificaciones de Requerimientos del Sistema del Prototipo V.1.0 |  |  | 2009-11-25 | 2009-11-25 |  |  |  | Lilibeth Ramírez | 8h |
| 28 | 1.1.4.4 | Elaboración del Documento de Especificaciones Suplementarias del Prototipo V.1.0 |  |  | 2009-11-25 | 2009-11-25 |  |  |  | Lilibeth Ramírez | 8h |
| 29 | 1.1.4.5 | Elaboración del Documentación del Conjunto de Casos de Pruebas V.1.0 |  |  | 2009-11-25 | 2009-11-25 |  | 42% |  | Lilibeth Ramírez | 8h |
| 30 | 1.1.4.6 | Elaboración del Documento de Resultados de Pruebas de Cobertura del Prototipo V1.0 |  |  | 2009-11-25 | 2009-11-25 |  |  |  |  | 8h |
| 31 | 1.1.5 | Primera Entrega | milestone | 0d | 2010-02-02 | 2010-02-02 |  |  | must start on 2010-02-02 | Lilibeth Ramírez |  |

| ID | WBS | Task | Duration | Start | Finish | Predecessors | Constraint | Resources | Work |
| --- | --- | --- | --- | --- | --- | --- | --- | --- | --- |
| 32 | 1.2 | **Sprint II** |  | 2010-04-13 | 2010-05-30 |  |  |  | 336h |
| 33 | 1.2.1 | Reunión Inicial Planificación Sprint |  | 2010-04-13 | 2010-04-13 |  | must start on 2010-04-13 | Walter Vargas | 4h |
| 34 | 1.2.2 | **Diseño** |  | 2010-04-13 | 2010-04-19 | 33 |  |  | 32h |
| 35 | 1.2.2.1 | Actualización del Diseño del Prototipo V.2.0 |  | 2010-04-19 | 2010-04-19 |  | must start on 2010-04-19 | Lilibeth Ramírez | 4h |
| 36 | 1.2.2.2 | Segunda Reunión con el Product Owner |  | 2010-04-13 | 2010-04-13 |  |  | Lilibeth Ramírez | 4h |
| 37 | 1.2.2.3 | Actualización de las Especificaciones de los Requerimientos del Sistema V.2.0 |  | 2010-04-13 | 2010-04-13 |  |  | Lilibeth Ramírez | 4h |
| 38 | 1.2.2.4 | Actualización de la Arquitectura de Software V.2.0 |  | 2010-04-14 | 2010-04-14 | 37 |  | Lilibeth Ramírez | 4h |
| 39 | 1.2.2.5 | Diseño de la arquitectura para el subsistema de verificaciones |  | 2010-04-13 | 2010-04-13 |  |  | Juan Mesa; Walter Vargas; José Rey | 8h |
| 40 | 1.2.2.6 | Especificar API del subsistema de pruebas |  | 2010-04-13 | 2010-04-14 | 39 |  | Juan Mesa; Walter Vargas; José Rey | 8h |
| 41 | 1.2.3 | **Desarrollo** |  | 2010-04-13 | 2010-04-29 | 33 |  |  | 180h |
| 42 | 1.2.3.1 | Crear Layout Base |  | 2010-04-13 | 2010-04-15 |  |  | Juan Mesa [35%]; Walter Vargas [35%]; José Rey [10%] | 16h |
| 43 | 1.2.3.2 | Crear Estilo para el Layout Base |  | 2010-04-16 | 2010-04-20 | 42 |  | Juan Mesa [30%]; Walter Vargas [40%] | 16h |
| 44 | 1.2.3.3 | Crear Estilo de Formularios |  | 2010-04-20 | 2010-04-21 | 43 |  | Juan Mesa; Walter Vargas | 4h |
| 45 | 1.2.3.4 | Crear Estilo para los mensajes del sistema |  | 2010-04-21 | 2010-04-21 | 44 |  | Juan Mesa; Walter Vargas | 4h |
| 46 | 1.2.3.5 | Crear Formulario de Registro de Entidades Verificadoras |  | 2010-04-13 | 2010-04-14 |  |  |  | 8h |
| 47 | 1.2.3.6 | Crear Vista Reporte de Entidades Verificadoras |  | 2010-04-21 | 2010-04-22 | 45 |  |  | 8h |
| 48 | 1.2.3.7 | Crear Formulario de Registro de Instituciones | 0.75d | 2010-04-22 | 2010-04-23 | 47 |  | Juan Mesa [67%]; Walter Vargas [67%] | 8h |
| 49 | 1.2.3.8 | Crear Vista Reporte de Instituciones |  | 2010-04-13 | 2010-04-14 |  |  |  | 8h |
| 50 | 1.2.3.9 | Crear Modelado de Datos del Sistema |  | 2010-04-23 | 2010-04-26 | 48 |  | Juan Mesa | 8h |
| 51 | 1.2.3.10 | Desarrolo de la API del subsistema de pruebas |  | 2010-04-26 | 2010-04-28 | 50 |  | José Rey | 16h |
| 52 | 1.2.3.11 | Elaborar tests para el subsistema de pruebas |  | 2010-04-28 | 2010-04-29 | 51 |  | José Rey | 8h |
| 53 | 1.2.3.12 | Revisiones Finales |  | 2010-04-29 | 2010-04-29 | 52 |  | Juan Mesa [50%]; Walter Vargas [50%]; José Rey | 8h |
| 54 | 1.2.3.13 | **Desarrollo de Disposiciones** |  | 2010-04-13 | 2010-04-22 |  |  |  | 68h |
| 55 | 1.2.3.13.1 | Verifcar el Uso de HTML 4.01 o XHTML 1.0 para la estructura organizativa de portales |  | 2010-04-13 | 2010-04-14 |  |  | José Rey | 6h |
| 56 | 1.2.3.13.2 | Ofrecer un enlace al manual de aplicaciones básicas del MINCI. |  | 2010-04-14 | 2010-04-14 | 55 |  | José Rey | 4h |
| 57 | 1.2.3.13.3 | Verificar el uso de imágenes y gráficos en formato PNG |  | 2010-04-14 | 2010-04-15 | 56 |  | José Rey | 5h |
| 58 | 1.2.3.13.4 | Verificar el uso del atributo ALT, en la etiqueta IMG |  | 2010-04-15 | 2010-04-15 | 57 |  |  | 4h |
| 59 | 1.2.3.13.5 | Verificar el uso de Unicode 8 bit (UTF-8) como codificación del juego de caracteres |  | 2010-04-15 | 2010-04-16 | 58 |  | José Rey | 4h |
| 60 | 1.2.3.13.6 | Verificar el uso de lenguaje Javascript |  | 2010-04-16 | 2010-04-16 | 59 |  | José Rey | 5h |
| 61 | 1.2.3.13.7 | Verificar la existencia de archivos con extensión “.js” |  | 2010-04-19 | 2010-04-19 | 60 |  | José Rey | 4h |
| 62 | 1.2.3.13.8 | Ofrecer un enlace al validador del la W3C |  | 2010-04-19 | 2010-04-19 | 61 |  | José Rey | 4h |
| 63 | 1.2.3.13.9 | Verificar el uso de la etiqueta TITLE |  | 2010-04-20 | 2010-04-20 | 62 |  | José Rey | 4h |
| 64 | 1.2.3.13.10 | Elaborar Tabla Reporte Web de Auditorías |  | 2010-04-20 | 2010-04-21 | 63 |  | José Rey | 6h |
| 65 | 1.2.3.13.11 | Elaborar Reporte Individual por Auditoría |  | 2010-04-21 | 2010-04-21 | 64 |  | José Rey | 6h |
| 66 | 1.2.3.13.12 | Gestionar Reportes del sistema |  | 2010-04-22 | 2010-04-22 | 65 |  | Walter Vargas; José Rey | 8h |
| 67 | 1.2.3.13.13 | Elaborar módulo básico de autenticación |  | 2010-04-13 | 2010-04-14 |  |  |  | 8h |

| ID | WBS | Task | Type | Duration | Start | Finish | Predecessors | Constraint | Resources | Work |
| --- | --- | --- | --- | --- | --- | --- | --- | --- | --- | --- |
| 68 | 1.2.4 | **Pruebas** |  |  | 2010-04-29 | 2010-05-03 | 13 |  |  | 16h |
| 69 | 1.2.4.1 | Conjunto de Casos de Pruebas Definidos para este Sprint |  |  | 2010-04-29 | 2010-04-30 | 53 |  |  | 8h |
| 70 | 1.2.4.2 | Pruebas de Cobertura al Sistema V.2.0 |  |  | 2010-04-30 | 2010-05-03 | 69 |  |  | 8h |
| 71 | 1.2.5 | **Documentación** |  |  | 2010-04-13 | 2010-04-30 | 33 |  |  | 104h |
| 72 | 1.2.5.1 | Actualización del Manual de Instalación del Prototipo V.2.0 |  |  | 2010-04-13 | 2010-04-15 |  |  | Lilibeth Ramírez | 16h |
| 73 | 1.2.5.2 | Elaboración del Manual de Usuario V.1.0 |  |  | 2010-04-15 | 2010-04-19 | 72 |  | Lilibeth Ramírez | 16h |
| 74 | 1.2.5.3 | Elaboració de Documentación de la API del subsistema de pruebas V.1.0 |  |  | 2010-04-19 | 2010-04-21 | 73 |  | Lilibeth Ramírez | 16h |
| 75 | 1.2.5.4 | Actualización del Documento de Arquitectura del Sistema del Prototipo V.2.0 |  |  | 2010-04-21 | 2010-04-23 | 74 |  | Lilibeth Ramírez | 16h |
| 76 | 1.2.5.5 | Actualización del Documento de Especificaciones de Requerimientos del Sistema del Prototipo V.2.0 |  |  | 2010-04-23 | 2010-04-26 | 75 |  | Lilibeth Ramírez | 8h |
| 77 | 1.2.5.6 | Actualización del Documento del Conjunto de Casos de Pruebas V.2.0 |  |  | 2010-04-26 | 2010-04-28 | 76 |  |  | 16h |
| 78 | 1.2.5.7 | Actualización de los Diagramas del Sistema |  |  | 2010-04-28 | 2010-04-30 | 77 |  |  | 16h |
| 79 | 1.2.6 | Segunda Entrega | milestone | 0d | 2010-05-31 | 2010-05-31 |  | must start on 2010-05-31 |  |  |
| 80 | 1.3 | **Sprint III** |  |  | 2009-11-25 | 2010-09-26 |  |  |  | 446.5h |
| 81 | 1.3.1 | Reunión Inicial de Planificación del Sprint |  |  | 2010-07-20 | 2010-07-20 |  | must start on 2010-07-20 | Walter Vargas | 3.5h |
| 82 | 1.3.2 | **Diseño** |  |  | 2010-07-20 | 2010-07-26 | 81 |  |  | 80h |
| 83 | 1.3.2.1 | Actualización del Diseño del Prototipo V.3.0 |  |  | 2010-07-20 | 2010-07-21 |  |  | Lilibeth Ramírez | 8h |
| 84 | 1.3.2.2 | Tercera Reunión con el Product Owner |  |  | 2010-07-20 | 2010-07-21 |  |  | Walter Vargas | 8h |
| 85 | 1.3.2.3 | Actualización del Manual del estilo Web V.3.0 |  |  | 2010-07-20 | 2010-07-22 |  |  | Lilibeth Ramírez | 16h |
| 86 | 1.3.2.4 | Actualización de las Especificaciones de los Requerimientos del Sistema V.3.0 |  |  | 2010-07-20 | 2010-07-21 |  |  | Lilibeth Ramírez | 8h |
| 87 | 1.3.2.5 | Actualización del Documento de Arquitectura de Software V.3.0 |  |  | 2010-07-20 | 2010-07-26 |  |  | Lilibeth Ramírez | 32h |
| 88 | 1.3.2.6 | Actualización de los Diagramas del Sistema |  |  | 2010-07-20 | 2010-07-21 |  |  | Lilibeth Ramírez | 8h |
| 89 | 1.3.3 | **Desarrollo** |  |  | 2009-11-25 | 2009-12-28 |  |  |  | 203h |
| 90 | 1.3.3.1 | Crear Modulo de Autentificación y Autorización |  |  | 2009-11-25 | 2009-11-26 |  |  | Juan Mesa [35%]; Walter Vargas [35%]; José Rey | 16h |
| 91 | 1.3.3.2 | Desarrollar Disposición para Verificar el uso de fuentes libres (Tipografia existente en las paginas HTML y archivos CSS) |  |  | 2009-11-26 | 2009-11-30 | 90 |  | Walter Vargas | 16h |
| 92 | 1.3.3.3 | Desarrollar Disposición para Verificar el uso de controladores añadibles |  |  | 2009-11-30 | 2009-12-03 | 91 |  | Juan Mesa | 24h |
| 93 | 1.3.3.4 | Desarrollar Disposición para Verificar el uso de metaetiquetas en el encabezado de los Archivos de Hipertexto |  |  | 2009-12-03 | 2009-12-07 | 92 |  | José Rey | 16h |
| 94 | 1.3.3.5 | Desarrollar Disposición para Verificar la seguridad de la capa de transporte del portal. |  |  | 2009-12-07 | 2009-12-10 | 93 |  | Walter Vargas | 24h |
| 95 | 1.3.3.6 | Desarrollar Disposición para Verificar la disponibilidad de archivos para descargar, con formatos propietarios |  |  | 2009-12-10 | 2009-12-14 | 94 |  | Juan Mesa | 16h |
| 96 | 1.3.3.7 | Desarrollar Disposición para Verificar en la maquetación gráfica el uso de elementos HTML, tales como tablas y marcos |  |  | 2009-12-14 | 2009-12-16 | 95 |  | José Rey | 16h |
| 97 | 1.3.3.8 | Desarrollar Módulo para Validar usuario |  |  | 2009-12-16 | 2009-12-21 | 96 |  | Walter Vargas | 24h |
| 98 | 1.3.3.9 | Elaborar Reporte PDF de Cada Auditoría |  |  | 2009-12-21 | 2009-12-23 | 97 |  | Juan Mesa | 16h |
| 99 | 1.3.3.10 | Elaborar filtros a la tabla de reportes |  |  | 2009-12-23 | 2009-12-25 | 98 |  | José Rey | 16h |
| 100 | 1.3.3.11 | Revisiones Finales |  |  | 2009-12-25 | 2009-12-28 | 99 |  | Juan Mesa [50%]; Walter Vargas [50%]; José Rey | 19h |

| ID | WBS | Task | Type | Duration | Start | Finish | Predecessors | Constraint | Resources | Work |
| --- | --- | --- | --- | --- | --- | --- | --- | --- | --- | --- |
| 101 | 1.3.4 | **Pruebas** |  |  | 2010-02-04 | 2010-02-05 | 13 |  |  | 16h |
| 102 | 1.3.4.1 | Casos de Pruebas Definidos para este Sprint |  |  | 2010-02-04 | 2010-02-05 |  |  |  | 8h |
| 103 | 1.3.4.2 | Resultados de las Pruebas |  |  | 2010-02-04 | 2010-02-05 |  |  |  | 8h |
| 104 | 1.3.5 | **Documentación** |  |  | 2009-11-25 | 2010-01-19 |  |  |  | 144h |
| 105 | 1.3.5.1 | Actualización del Manual de Instalación del Prototipo V.3.0 |  |  | 2009-12-28 | 2009-12-31 | 100 |  | Lilibeth Ramírez | 24h |
| 106 | 1.3.5.2 | Actualización del Manual de Usuario V.2.0 |  |  | 2009-12-31 | 2010-01-06 | 105 |  | Lilibeth Ramírez | 32h |
| 107 | 1.3.5.3 | Actualización Documentación de la API del subsistema de pruebas V.3.0 |  |  | 2010-01-06 | 2010-01-08 | 106 |  | Lilibeth Ramírez | 16h |
| 108 | 1.3.5.4 | Actualización del Documento de Arquitectura del Sistema del Prototipo V.3.0 |  |  | 2010-01-08 | 2010-01-13 | 107 |  | Lilibeth Ramírez | 24h |
| 109 | 1.3.5.5 | Actualización del Documento de Especificaciones de Requerimientos del Sistema del Prototipo V.3.0 |  |  | 2010-01-13 | 2010-01-15 | 108 |  | Lilibeth Ramírez | 16h |
| 110 | 1.3.5.6 | Actualización del Documento de Especificaciones Suplementarias del Prototipo V.3.0 |  |  | 2009-11-25 | 2009-11-25 |  |  |  | 8h |
| 111 | 1.3.5.7 | Actualización del Documento del Conjunto de Casos de Pruebas V.3.0 |  |  | 2010-01-15 | 2010-01-19 | 109 |  | Lilibeth Ramírez | 16h |
| 112 | 1.3.5.8 | Actualización de los Diagramas del Sistema |  |  | 2009-11-25 | 2009-11-25 |  |  |  | 8h |
| 113 | 1.3.6 | Tercera Entrega | milestone | 0d | 2010-09-27 | 2010-09-27 |  | must start on 2010-09-27 |  |  |
| 114 | 1.4 | **Documentación Capacitación** |  |  | 2010-06-21 | 2010-06-29 |  |  |  | 72h |
| 115 | 1.4.1 | Diseño Instruccional de Capacitacion V.1.0 |  |  | 2010-06-21 | 2010-06-25 | 111 | start no earlier than 2010-06-21 | Lilibeth Ramírez | 40h |
| 116 | 1.4.2 | Plan de Formacion de Capacitaciones V.1.0 |  |  | 2010-06-28 | 2010-06-28 | 115 |  | Juan Mesa; Walter Vargas | 16h |
| 117 | 1.4.3 | Presentación para Capacitacion V.1.0 |  |  | 2010-06-29 | 2010-06-29 | 116 |  | Juan Mesa; Walter Vargas | 16h |
| 118 | 1.5 | **Implementación** |  |  | 2010-06-28 | 2010-07-09 |  |  |  | 80h |
| 119 | 1.5.1 | Implementación |  |  | 2010-06-28 | 2010-07-02 |  | must start on 2010-06-28 |  | 40h |
| 120 | 1.5.2 | Transferencia |  |  | 2010-07-05 | 2010-07-09 | 119 |  |  | 40h |
| 121 | 1.6 | **Cierre Administrativo** |  |  | 2010-05-10 | 2010-05-10 |  |  |  |  |
| 122 | 1.6.1 | Envio de Factura | milestone | 0d | 2010-05-10 | 2010-05-10 |  | must start on 2010-05-10 |  |  |
